# SPORTACUS

Schedule from MS Project, 2024-04-18 to 2025-04-10, costs in €.
HP

## Calendars

- Estándar: Mon-Fri 09:00-13:00, 15:00-19:00; Sat-Sun off. Exceptions (off unless hours are given): 2024-05-01 to 2024-05-03 (Puente de Mayo), 2024-05-15 (Dia Internacional de las Familias).

## Resources

| Resource | Rate |
| --- | --- |
| Analista de Sistemas | 50 |
| Diseñador Senior | 43.75 |
| Diseñador Junior 1 | 25 |
| Diseñador Junior 2 | 25 |
| Técnico de Sistemas | 37.5 |
| Equipo de Desarrollo | 5.97 |
| Estación de Trabajo | 1650 |
| Estación de Pruebas de Rendimiento | 3200 |
| Entorno de Desarrollo Integrado | 1100 |
| Jefe de Proyecto | 50 |

## Schedule

| ID | WBS | Task | Type | Duration | Start | Finish | Predecessors | Total slack | Free slack | Resources | Work | Cost |
| --- | --- | --- | --- | --- | --- | --- | --- | --- | --- | --- | --- | --- |
| 1 | 1 | **SPORTACUS** |  | 251.73d | 2024-04-18 | 2025-04-10 |  | 0d |  | Equipo de Desarrollo; Estación de Pruebas de Rendimiento; Estación de Trabajo [300%]; Jefe de Proyecto [20%]; Entorno de Desarrollo Integrado [300%] | 5938.67h | 188,826.39 |
| 2 | 1.1 | **Incremento 1** |  | 100.36d | 2024-04-18 | 2024-09-11 |  | 0d |  |  | 1244.17h | 52,121.57 |
| 3 | 1.1.1 | **Análisis de Requisitos** |  | 23.76d | 2024-04-18 | 2024-05-27 |  | 0d |  |  | 190.08h | 9,504 |
| 4 | 1.1.1.1 | Especificación de requisitos |  | 15.92d | 2024-04-18 | 2024-05-14 |  | 0d |  | Analista de Sistemas | 127.36h | 6,368 |
| 5 | 1.1.1.2 | Prototipado |  | 7.84d | 2024-05-14 | 2024-05-27 | 4 | 0d |  | Analista de Sistemas | 62.72h | 3,136 |
| 6 | 1.1.1.3 | Revisión del Análisis de Requisitos | milestone | 0d | 2024-05-27 | 2024-05-27 | 4, 5 | 0d |  |  |  |  |
| 7 | 1.1.2 | **Diseño** |  | 10.1d | 2024-05-27 | 2024-06-10 | 3 | 0d |  |  | 202.29h | 7,493.32 |
| 8 | 1.1.2.1 | Diseño del SGU |  | 8.02d | 2024-05-27 | 2024-06-06 |  | 2.08d | 0d | Analista de Sistemas [33%]; Diseñador Junior 1; Diseñador Senior [50%] | 92.37h | 3,283.64 |
| 9 | 1.1.2.2 | Diseño del SRE |  | 10.1d | 2024-05-27 | 2024-06-10 |  | 0d |  | Analista de Sistemas [33%]; Diseñador Junior 2 [50%] | 49.9h | 1,914.2 |
| 10 | 1.1.2.3 | Diseño del SBU |  | 5.64d | 2024-05-27 | 2024-06-04 |  | 4.46d | 0d | Diseñador Junior 2 [50%]; Diseñador Senior [50%]; Analista de Sistemas [33%] | 60.01h | 2,295.48 |
| 11 | 1.1.2.4 | Revisión del diseño del SGU | milestone | 0d | 2024-06-06 | 2024-06-06 | 8 | 2.08d |  |  |  |  |
| 12 | 1.1.2.5 | Revisión del diseño del SRE | milestone | 0d | 2024-06-10 | 2024-06-10 | 9 | 0d |  |  |  |  |
| 13 | 1.1.2.6 | Revisión del diseño del SBU | milestone | 0d | 2024-06-04 | 2024-06-04 | 10 | 4.46d |  |  |  |  |
| 14 | 1.1.3 | **Codificación** |  | 10.1d | 2024-06-10 | 2024-06-24 | 7 | 0d |  |  | 191.28h | 6,141 |
| 15 | 1.1.3.1 | Codificación del SGU |  | 8.02d | 2024-06-10 | 2024-06-20 |  | 2.08d |  | Diseñador Junior 2 [50%]; Diseñador Senior [50%] | 64.16h | 2,205.5 |
| 16 | 1.1.3.2 | Codificación del SRE |  | 10.1d | 2024-06-10 | 2024-06-24 |  | 0d |  | Diseñador Senior [50%]; Diseñador Junior 1 | 104.56h | 3,371.5 |
| 17 | 1.1.3.3 | Codificación del SBU |  | 5.64d | 2024-06-10 | 2024-06-18 |  | 4.46d |  | Diseñador Junior 2 [50%] | 22.56h | 564 |
| 18 | 1.1.4 | **Pruebas Unitarias** |  | 5.05d | 2024-06-24 | 2024-07-02 | 14 | 0d |  |  | 90.28h | 2,847.25 |
| 19 | 1.1.4.1 | Pruebas unitarias del SGU |  | 4.01d | 2024-06-24 | 2024-06-28 | 15 | 1.04d |  | Diseñador Junior 2 [50%] | 16.04h | 401 |
| 20 | 1.1.4.2 | Pruebas unitarias del SRE |  | 5.05d | 2024-06-24 | 2024-07-02 | 16 | 0d |  | Diseñador Senior [50%]; Diseñador Junior 2 [50%] | 40.4h | 1,388.75 |
| 21 | 1.1.4.3 | Pruebas unitarias del SBU |  | 2.82d | 2024-06-24 | 2024-06-27 | 17 | 2.23d |  | Diseñador Senior [50%]; Diseñador Junior 1 | 33.84h | 1,057.5 |
| 22 | 1.1.5 | **Pruebas de Integración** |  | 23.76d | 2024-07-02 | 2024-08-02 | 18 | 0d |  |  | 380.16h | 17,820 |
| 23 | 1.1.5.1 | Pruebas de Integración |  | 23.76d | 2024-07-02 | 2024-08-02 |  | 0d |  | Analista de Sistemas; Diseñador Senior | 380.16h | 17,820 |
| 24 | 1.1.5.2 | Revisión de pruebas de Integración | milestone | 0d | 2024-08-02 | 2024-08-02 | 23 | 0d |  |  |  |  |

| ID | WBS | Task | Type | Duration | Start | Finish | Predecessors | Total slack | Free slack | Constraint | Resources | Work | Cost |
| --- | --- | --- | --- | --- | --- | --- | --- | --- | --- | --- | --- | --- | --- |
| 25 | 1.1.6 | **Implantación** |  | 27.59d | 2024-08-02 | 2024-09-11 | 22 | 0d |  |  |  | 190.08h | 8,316 |
| 26 | 1.1.6.1 | Implantación Técnica |  | 12.9d | 2024-08-02 | 2024-09-05 |  | 3.92d |  |  | Analista de Sistemas; Técnico de Sistemas | 127.36h | 5,572 |
| 27 | 1.1.6.2 | Implantación Aceptación |  | 7.84d | 2024-08-02 | 2024-09-11 |  | 0d |  |  | Analista de Sistemas; Técnico de Sistemas | 62.72h | 2,744 |
| 28 | 1.1.6.3 | Revisión de la Implantación | milestone | 0d | 2024-09-11 | 2024-09-11 | 26, 27 | 0d |  |  |  |  |  |
| 29 | 1.2 | **Incremento 2** |  | 44.9d | 2024-09-11 | 2024-11-13 | 2 | 0d |  |  |  | 729h | 29,086.66 |
| 30 | 1.2.1 | **Análisis de Requisitos** |  | 10.99d | 2024-09-11 | 2024-09-26 |  | 0d |  |  |  | 87.92h | 4,396 |
| 31 | 1.2.1.1 | Especificación de requisitos |  | 7.36d | 2024-09-11 | 2024-09-20 |  | 0d |  |  | Analista de Sistemas | 58.88h | 2,944 |
| 32 | 1.2.1.2 | Prototipado |  | 3.63d | 2024-09-20 | 2024-09-26 | 31 | 0d |  |  | Analista de Sistemas | 29.04h | 1,452 |
| 33 | 1.2.1.3 | Revisión del Análisis de Requisitos | milestone | 0d | 2024-09-26 | 2024-09-26 | 31, 32 | 0d |  |  |  |  |  |
| 34 | 1.2.2 | **Diseño** |  | 7.13d | 2024-09-26 | 2024-10-07 | 30 | 0d |  |  |  | 179.26h | 6,408.54 |
| 35 | 1.2.2.1 | Diseño del SLE |  | 3.86d | 2024-09-26 | 2024-10-02 |  | 2.48d | 0d |  | Analista de Sistemas [50%]; Diseñador Junior 2 | 46.29h | 1,542.36 |
| 36 | 1.2.2.2 | Diseño del SGP |  | 7.13d | 2024-09-26 | 2024-10-07 |  | 0d |  | start no earlier than 2024-09-26 | Analista de Sistemas [50%]; Diseñador Junior 1; Diseñador Senior | 132.97h | 4,866.17 |
| 37 | 1.2.2.3 | Revisión del diseño del SLE | milestone | 0d | 2024-10-02 | 2024-10-02 | 35 | 2.48d |  | finish no earlier than 2024-10-02 |  |  |  |
| 38 | 1.2.2.4 | Revisión del diseño del SGP | milestone | 0d | 2024-10-07 | 2024-10-07 | 36 | 0d |  |  |  |  |  |
| 39 | 1.2.3 | **Codificación** |  | 7.13d | 2024-10-07 | 2024-10-16 | 34 | 0d |  |  |  | 144.96h | 4,693.5 |
| 40 | 1.2.3.1 | Codificación del SLE |  | 3.86d | 2024-10-07 | 2024-10-11 |  | 3.27d |  |  | Diseñador Junior 1 | 30.88h | 772 |
| 41 | 1.2.3.2 | Codificación del SGP |  | 7.13d | 2024-10-07 | 2024-10-16 |  | 0d |  |  | Diseñador Senior; Diseñador Junior 2 | 114.08h | 3,921.5 |
| 42 | 1.2.4 | **Pruebas Unitarias** |  | 3.56d | 2024-10-16 | 2024-10-22 | 39 | 0d |  |  |  | 59.36h | 1,773.5 |
| 43 | 1.2.4.1 | Pruebas unitarias del SLE |  | 1.93d | 2024-10-16 | 2024-10-18 | 40 | 1.63d |  |  | Diseñador Junior 2; Diseñador Senior | 30.88h | 1,061.5 |
| 44 | 1.2.4.2 | Pruebas unitarias del SGP |  | 3.56d | 2024-10-16 | 2024-10-22 | 41 | 0d |  |  | Diseñador Junior 1 | 28.48h | 712 |
| 45 | 1.2.5 | **Pruebas de Integración** |  | 10.99d | 2024-10-22 | 2024-11-06 | 42 | 0d |  |  |  | 175.84h | 8,242.5 |
| 46 | 1.2.5.1 | Pruebas de Integración |  | 10.99d | 2024-10-22 | 2024-11-06 |  | 0d |  |  | Analista de Sistemas; Diseñador Senior | 175.84h | 8,242.5 |
| 47 | 1.2.5.2 | Revisión de pruebas de Integración | milestone | 0d | 2024-11-06 | 2024-11-06 | 46 | 0d |  |  |  |  |  |
| 48 | 1.2.6 | **Implantación** |  | 5.1d | 2024-11-06 | 2024-11-13 | 45 | 0d |  |  |  | 81.66h | 3,572.63 |
| 49 | 1.2.6.1 | Implantación Técnica |  | 3.68d | 2024-11-06 | 2024-11-13 |  | 0d |  |  | Analista de Sistemas; Técnico de Sistemas | 55.79h | 2,460.12 |
| 50 | 1.2.6.2 | Implantación Aceptación |  | 1.81d | 2024-11-06 | 2024-11-11 |  | 1.52d |  |  | Analista de Sistemas; Técnico de Sistemas | 25.87h | 1,112.5 |
| 51 | 1.2.6.3 | Revisión de la Implantación | milestone | 0d | 2024-11-13 | 2024-11-13 | 49, 50 | 0d |  |  |  |  |  |

| ID | WBS | Task | Type | Duration | Start | Finish | Predecessors | Total slack | Free slack | Resources | Work | Cost |
| --- | --- | --- | --- | --- | --- | --- | --- | --- | --- | --- | --- | --- |
| 52 | 1.3 | **Incremento 3** |  | 106.46d | 2024-11-13 | 2025-04-10 | 29 | 0d |  |  | 1548.92h | 64,015.75 |
| 53 | 1.3.1 | **Análisis de Requisitos** |  | 28.51d | 2024-11-13 | 2024-12-23 |  | 0d |  |  | 228.08h | 11,404 |
| 54 | 1.3.1.1 | Especificación de requisitos |  | 19.1d | 2024-11-13 | 2024-12-10 |  | 0d |  | Analista de Sistemas | 152.8h | 7,640 |
| 55 | 1.3.1.2 | Prototipado |  | 9.41d | 2024-12-10 | 2024-12-23 | 54 | 0d |  | Analista de Sistemas | 75.28h | 3,764 |
| 56 | 1.3.1.3 | Revisión del Análisis de Requisitos | milestone | 0d | 2024-12-23 | 2024-12-23 | 54, 55 | 0d |  |  |  |  |
| 57 | 1.3.2 | **Diseño** |  | 14.25d | 2024-12-23 | 2025-01-13 | 53 | 0d |  |  | 338.88h | 12,090 |
| 58 | 1.3.2.1 | Diseño del SFO |  | 14.25d | 2024-12-23 | 2025-01-13 |  | 0d |  | Diseñador Junior 1; Diseñador Senior [50%]; Analista de Sistemas [33%] | 208.62h | 7,224.75 |
| 59 | 1.3.2.2 | Diseño del SVA |  | 5.34d | 2024-12-23 | 2024-12-31 |  | 8.91d | 0d | Diseñador Junior 2 [50%]; Analista de Sistemas [33%] | 35.46h | 1,238.88 |
| 60 | 1.3.2.3 | Diseño del SCO |  | 8.91d | 2024-12-23 | 2025-01-03 |  | 5.34d | 0d | Diseñador Junior 2 [50%]; Diseñador Senior [50%]; Analista de Sistemas [33%] | 94.8h | 3,626.37 |
| 61 | 1.3.2.4 | Revisión del diseño del SFO | milestone | 0d | 2025-01-13 | 2025-01-13 | 58 | 0d |  |  |  |  |
| 62 | 1.3.2.5 | Revisión del diseño del SVA | milestone | 0d | 2024-12-31 | 2024-12-31 | 59 | 8.91d |  |  |  |  |
| 63 | 1.3.2.6 | Revisión del diseño del SCO | milestone | 0d | 2025-01-03 | 2025-01-03 | 60 | 5.34d |  |  |  |  |
| 64 | 1.3.3 | **Codificación** |  | 14.25d | 2025-01-13 | 2025-01-31 | 57 | 0d |  |  | 213.72h | 6,812.25 |
| 65 | 1.3.3.1 | Codificación del SFO |  | 14.25d | 2025-01-13 | 2025-01-31 |  | 0d |  | Diseñador Junior 2 [50%]; Diseñador Senior [50%] | 114h | 3,918.75 |
| 66 | 1.3.3.2 | Codificación del SVA |  | 5.34d | 2025-01-13 | 2025-01-20 |  | 8.91d |  | Diseñador Junior 1; Diseñador Senior [50%] | 64.08h | 2,002.5 |
| 67 | 1.3.3.3 | Codificación del SCO |  | 8.91d | 2025-01-13 | 2025-01-23 |  | 5.34d |  | Diseñador Junior 2 [50%] | 35.64h | 891 |
| 68 | 1.3.4 | **Pruebas Unitarias** |  | 7.13d | 2025-01-31 | 2025-02-11 | 64 | 0d |  |  | 103.28h | 3,116 |
| 69 | 1.3.4.1 | Pruebas unitarias del SFO |  | 7.13d | 2025-01-31 | 2025-02-11 | 65 | 0d |  | Diseñador Junior 2 [50%] | 28.52h | 713 |
| 70 | 1.3.4.2 | Pruebas unitarias del SVA |  | 2.67d | 2025-01-31 | 2025-02-04 | 66 | 4.46d |  | Diseñador Senior [50%]; Diseñador Junior 2 [50%] | 21.36h | 734.25 |
| 71 | 1.3.4.3 | Pruebas unitarias del SCO |  | 4.45d | 2025-01-31 | 2025-02-06 | 67 | 2.68d |  | Diseñador Senior [50%]; Diseñador Junior 1 | 53.4h | 1,668.75 |
| 72 | 1.3.5 | **Pruebas de Integración** |  | 28.51d | 2025-02-11 | 2025-03-21 | 68 | 0d |  |  | 456.16h | 21,382.5 |
| 73 | 1.3.5.1 | Pruebas de Integración |  | 28.51d | 2025-02-11 | 2025-03-21 |  | 0d |  | Analista de Sistemas; Diseñador Senior | 456.16h | 21,382.5 |
| 74 | 1.3.5.2 | Revisión de pruebas de Integración | milestone | 0d | 2025-03-21 | 2025-03-21 | 73 | 0d |  |  |  |  |
| 75 | 1.3.6 | **Implantación** |  | 13.81d | 2025-03-21 | 2025-04-10 | 72 | 0d |  |  | 208.8h | 9,211 |
| 76 | 1.3.6.1 | Implantación Técnica |  | 11.51d | 2025-03-21 | 2025-04-10 |  | 0d |  | Analista de Sistemas; Técnico de Sistemas | 152.8h | 6,685 |
| 77 | 1.3.6.2 | Implantación Aceptación |  | 4.7d | 2025-03-21 | 2025-04-04 |  | 3.98d |  | Analista de Sistemas; Técnico de Sistemas | 56h | 2,526 |
| 78 | 1.3.6.3 | Revisión de la Implantación | milestone | 0d | 2025-04-10 | 2025-04-10 | 76, 77 | 0d |  |  |  |  |
